Schedule from MS Project, 2023-09-14 to 2023-12-07.

## Calendars

- Estándar: Mon-Fri 09:00-13:00, 15:00-19:00; Sat-Sun off.

## Resources

| Resource | Cost per use |
| --- | --- |
| <Recurso nuevo> |  |
| Computadoras | 1020000 |
| Materiales electricos | 40000 |
| Materiles de limpieza | 6000 |
| Ingeniero de Sistemas |  |
| Electricista |  |
| Tecnico informatico |  |
| Programador1 |  |
| Programador2 |  |
| Diseñador de Interfaces |  |
| Ingeniero de pruebas |  |
| Analista en sistemas |  |
| Administrador de BD |  |
| Servicio de limpieza |  |
| Capacitador |  |

## Schedule

| ID | WBS | Task | Type | Duration | Start | Finish | Predecessors | Total slack | Free slack |
| --- | --- | --- | --- | --- | --- | --- | --- | --- | --- |
| 1 | 1 | **Sistema de gestion de turnos y pacientes para la SAP** |  | 60.75d | 2023-09-14 | 2023-12-07 |  | 0d |  |
| 2 | 1.1 | **Investigación preliminar** |  | 19.75d | 2023-09-14 | 2023-10-11 |  | 0d |  |
| 3 | 1.1.1 | Verificar el estado de las instalaciones electricas. |  | 2d | 2023-09-14 | 2023-09-15 |  | 42d | 0d |
| 4 | 1.1.2 | Investigar recursos para el reacondicionamiento electrico del sitio. |  | 3d | 2023-09-18 | 2023-09-20 | 3 | 42d | 0d |
| 5 | 1.1.3 | Realizar entrevista al jefe |  | 0.25d | 2023-09-14 | 2023-09-14 |  | 0d |  |
| 6 | 1.1.4 | Realizar entrevista a las recepcionistas |  | 0.25d | 2023-09-14 | 2023-09-14 |  | 0d |  |
| 7 | 1.1.5 | Elaborar Especificación de Requisitos de Usuario (ERS) |  | 3d | 2023-09-14 | 2023-09-19 | 5, 6 | 0d |  |
| 8 | 1.1.6 | Verificar el estado de los equipos actuales (computadoras). |  | 2d | 2023-09-19 | 2023-09-21 | 7 | 38d | 0d |
| 9 | 1.1.7 | Realizar pedido de computadoras nuevas a la Subsecretaría de Salud. |  | 0.5d | 2023-09-21 | 2023-09-21 | 8 | 38d | 0d |
| 10 | 1.1.8 | Recibir pedido de computadoras. |  | 14d | 2023-09-21 | 2023-10-11 | 9 | 38d | 0d |
| 11 | 1.1.9 | Investigación preliminar realizada. | milestone | 0d | 2023-10-11 | 2023-10-11 | 10 | 38d |  |
| 12 | 1.2 | **Desarrollo** |  | 57.5d | 2023-09-19 | 2023-12-07 |  | 0d |  |
| 13 | 1.2.1 | **Base de datos** |  | 13.5d | 2023-09-19 | 2023-10-06 |  | 0d |  |
| 14 | 1.2.1.1 | Recopilar informacion de las planillas de Excel |  | 1d | 2023-09-19 | 2023-09-20 | 7 | 56d | 12d |
| 15 | 1.2.1.2 | Realizar el modelo entidad relación de la base de datos para turnos y pacientes. |  | 5d | 2023-09-19 | 2023-09-26 | 7 | 0d |  |
| 16 | 1.2.1.3 | Realizar modelo relacional de la BD. |  | 3d | 2023-09-26 | 2023-09-29 | 15 | 0d |  |
| 17 | 1.2.1.4 | Desarrollar la base de datos. |  | 5d | 2023-09-29 | 2023-10-06 | 16 | 0d |  |
| 18 | 1.2.1.5 | Importar datos a la BD |  | 0.5d | 2023-10-06 | 2023-10-06 | 14, 17 | 44d |  |
| 19 | 1.2.1.6 | Desplegar la base de datos. |  | 0.5d | 2023-10-06 | 2023-10-06 | 17 | 0d |  |
| 20 | 1.2.1.7 | Base de datos desplegada. | milestone | 0d | 2023-10-06 | 2023-10-06 | 19 | 44d |  |
| 21 | 1.2.2 | **Interfaz de usuario** |  | 12.25d | 2023-09-19 | 2023-10-05 |  | 1.25d |  |
| 22 | 1.2.2.1 | Diseñar boceto de interfaz del programa que será usado por el personal de recepción. |  | 4d | 2023-09-19 | 2023-09-25 | 7 | 1.25d | 0d |
| 23 | 1.2.2.2 | Presentar boceto al personal de recepción. |  | 0.25d | 2023-09-25 | 2023-09-25 | 22 | 1.25d | 0d |
| 24 | 1.2.2.3 | Desarrollar interfaz. |  | 8d | 2023-09-25 | 2023-10-05 | 23 | 1.25d | 0d |
| 25 | 1.2.2.4 | Interfaz de usuario realizada. | milestone | 0d | 2023-10-05 | 2023-10-05 | 24 | 1.25d |  |

| ID | WBS | Task | Type | Duration | Start | Finish | Predecessors | Total slack |
| --- | --- | --- | --- | --- | --- | --- | --- | --- |
| 26 | 1.2.3 | **Aplicación** |  | 15d | 2023-10-06 | 2023-10-27 |  | 0d |
| 27 | 1.2.3.1 | Realizar diagrama de clases. |  | 1d | 2023-10-06 | 2023-10-09 | 19, 25 | 0d |
| 28 | 1.2.3.2 | Desarrollar el módulo de turnos de la aplicación. |  | 14d | 2023-10-09 | 2023-10-27 | 27 | 0d |
| 29 | 1.2.3.3 | Desarrollar el módulo de pacientes de la aplicación. |  | 14d | 2023-10-09 | 2023-10-27 | 27 | 0d |
| 30 | 1.2.3.4 | Aplicación desarrollada. | milestone | 0d | 2023-10-27 | 2023-10-27 | 29, 28 | 0d |
| 31 | 1.2.4 | **Integración** |  | 12d | 2023-10-27 | 2023-11-14 |  | 0d |
| 32 | 1.2.4.1 | Integrar capas del sistema. |  | 5d | 2023-10-27 | 2023-11-03 | 30 | 0d |
| 33 | 1.2.4.2 | Realizar pruebas al sistema. |  | 7d | 2023-11-03 | 2023-11-14 | 32 | 0d |
| 34 | 1.2.4.3 | Realizar manual de usuario de la aplicación. |  | 5d | 2023-11-03 | 2023-11-10 | 32 | 2d |
| 35 | 1.2.4.4 | Integración finalizada. | milestone | 0d | 2023-11-14 | 2023-11-14 | 34, 33 | 0d |
| 36 | 1.2.5 | **Despliegue** |  | 17d | 2023-11-14 | 2023-12-07 |  | 0d |
| 37 | 1.2.5.1 | Realizar presupuesto de recursos para el reacondicionamiento eléctrico del sitio (cableado y limpieza). |  | 4d | 2023-11-14 | 2023-11-20 | 35, 4 | 0d |
| 38 | 1.2.5.2 | Reacondicionar el lugar. |  | 10d | 2023-11-20 | 2023-12-04 | 37 | 0d |
| 39 | 1.2.5.3 | Instalar las nuevas computadoras en el área de recepción. |  | 0.75d | 2023-12-04 | 2023-12-05 | 38, 11 | 0d |
| 40 | 1.2.5.4 | Instalar el sistema en las computadoras nuevas. |  | 0.25d | 2023-12-05 | 2023-12-05 | 39 | 0d |
| 41 | 1.2.5.5 | Capacitar al personal de recepción. |  | 2d | 2023-12-05 | 2023-12-07 | 40 | 0d |
| 42 | 1.2.5.6 | Sistema desplegado. | milestone | 0d | 2023-12-07 | 2023-12-07 | 41 | 0d |
| 43 | 1.2.6 | Desarrollo finalizado. | milestone | 0d | 2023-12-07 | 2023-12-07 | 42 | 0d |
| 44 | 2 | Sistema de gestión implementado. | milestone | 0d | 2023-12-07 | 2023-12-07 | 43 | 0d |
